# Создание программного комплекса

How a schedule from MS Project changed from version to version. A marks actual dates.

## Version 1 (saved 2026-03-25, file rk1_16.mpp)

Note of the change: Added rk1

| ID | WBS | Task | Duration | Start | Finish | Predecessors | Total float |
| --- | --- | --- | --- | --- | --- | --- | --- |
| 1 |  | Начало реализации проекта | 0d | 2026-04-06 | 2026-04-06 |  | 0d |
| 2 | 2 | **Программирование** | 32d | 2026-04-07 | 2026-05-25 |  | 0d |
| 3 |  | Постановка задачи | 5d | 2026-04-07 | 2026-04-13 | 1FS+1d | 0d |
| 4 |  | Разработка интерфейса | 10d | 2026-04-14 | 2026-04-27 | 3 | 2d |
| 5 |  | Разработка модулей обработки данных | 15d | 2026-04-28 | 2026-05-21 | 4 | 2d |
| 6 |  | Разработа базы данных | 15d | 2026-04-14 | 2026-05-06 | 3 | 0d |
| 7 |  | Заполнение базы данных | 12d | 2026-05-06 | 2026-05-25 | 6 | 0d |
| 8 |  | Программирование завершено | 0d | 2026-05-25 | 2026-05-25 | 5, 7 | 0d |
| 9 | 4 | **Тестирование и отладка** | 20d | 2026-05-18 | 2026-06-16 |  | 20d |
| 10 |  | Подготовка тестовых наборов данных | 5d | 2026-05-18 | 2026-05-25 | 8FS-5d | 20d |
| 11 |  | Тестирование и исправление ошибок | 15d | 2026-05-25 | 2026-06-16 | 10 | 20d |
| 12 |  | Отладка завершена | 0d | 2026-06-16 | 2026-06-16 | 11 | 20d |
| 13 | 6 | **Разработка документации** | 25d | 2026-06-08 | 2026-07-14 |  | 0d |
| 14 |  | Составление программной документации | 10d | 2026-06-08 | 2026-06-23 | 8SS+10d | 0d |
| 15 |  | Составление пользовательской документации | 15d | 2026-06-23 | 2026-07-14 | 14 | 0d |
| 16 |  | Конец проекта | 0d | 2026-07-14 | 2026-07-14 | 15 | 0d |

## Version 2 (saved 2026-03-25, file rk1_7.mpp)

Note of the change: Added rk1

Last finish 2026-07-14 → 2026-07-28 (+14d).

Changed:

| ID | Task | Start | Finish | Duration | Total float |
| --- | --- | --- | --- | --- | --- |
| 2 | **Программирование** |  | 2026-05-25 → 2026-06-08 (+14d) | 32d → 42d |  |
| 4 | Разработка интерфейса |  | 2026-04-27 → 2026-05-06 (+9d) | 10d → 15d | 2d → 7d |
| 5 | Разработка модулей обработки данных | 2026-04-28 → 2026-05-06 (+8d) | 2026-05-21 → 2026-05-28 (+7d) |  | 2d → 7d |
| 6 | Разработа базы данных |  | 2026-05-06 → 2026-05-21 (+15d) | 15d → 25d |  |
| 7 | Заполнение базы данных | 2026-05-06 → 2026-05-21 (+15d) | 2026-05-25 → 2026-06-08 (+14d) |  |  |
| 8 | Программирование завершено | 2026-05-25 → 2026-06-08 (+14d) | 2026-05-25 → 2026-06-08 (+14d) |  |  |
| 9 | **Тестирование и отладка** | 2026-05-18 → 2026-06-01 (+14d) | 2026-06-16 → 2026-06-30 (+14d) |  |  |
| 10 | Подготовка тестовых наборов данных | 2026-05-18 → 2026-06-01 (+14d) | 2026-05-25 → 2026-06-08 (+14d) |  |  |
| 11 | Тестирование и исправление ошибок | 2026-05-25 → 2026-06-08 (+14d) | 2026-06-16 → 2026-06-30 (+14d) |  |  |
| 12 | Отладка завершена | 2026-06-16 → 2026-06-30 (+14d) | 2026-06-16 → 2026-06-30 (+14d) |  |  |
| 13 | **Разработка документации** | 2026-06-08 → 2026-06-23 (+15d) | 2026-07-14 → 2026-07-28 (+14d) |  |  |
| 14 | Составление программной документации | 2026-06-08 → 2026-06-23 (+15d) | 2026-06-23 → 2026-07-07 (+14d) |  |  |
| 15 | Составление пользовательской документации | 2026-06-23 → 2026-07-07 (+14d) | 2026-07-14 → 2026-07-28 (+14d) |  |  |
| 16 | Конец проекта | 2026-07-14 → 2026-07-28 (+14d) | 2026-07-14 → 2026-07-28 (+14d) |  |  |

## Version 3 (saved 2026-03-25, file rk1_8.mpp)

Note of the change: Added rk1

Last finish 2026-07-28 → 2026-07-31 (+3d).

Added:

| ID | Task | Duration | Start | Finish | Constraint | Resources |
| --- | --- | --- | --- | --- | --- | --- |
| 17 | **Профилактика оборудования** | 64d | 2026-04-21 09:00 | 2026-07-28 12:00 |  |  |
| 18 | Профилактика оборудования 1 | 3h | 2026-04-21 09:00 | 2026-04-21 12:00 | start no earlier than 2026-04-21 09:00 | Профилактика [1 Обсл] |
| 19 | Профилактика оборудования 2 | 3h | 2026-05-05 09:00 | 2026-05-05 12:00 | start no earlier than 2026-05-05 09:00 | Профилактика [1 Обсл] |
| 20 | Профилактика оборудования 3 | 3h | 2026-05-19 09:00 | 2026-05-19 12:00 | start no earlier than 2026-05-19 09:00 | Профилактика [1 Обсл] |
| 21 | Профилактика оборудования 4 | 3h | 2026-06-02 09:00 | 2026-06-02 12:00 | start no earlier than 2026-06-02 09:00 | Профилактика [1 Обсл] |
| 22 | Профилактика оборудования 5 | 3h | 2026-06-16 09:00 | 2026-06-16 12:00 | start no earlier than 2026-06-16 09:00 | Профилактика [1 Обсл] |
| 23 | Профилактика оборудования 6 | 3h | 2026-06-30 09:00 | 2026-06-30 12:00 | start no earlier than 2026-06-30 09:00 | Профилактика [1 Обсл] |
| 24 | Профилактика оборудования 7 | 3h | 2026-07-14 09:00 | 2026-07-14 12:00 | start no earlier than 2026-07-14 09:00 | Профилактика [1 Обсл] |
| 25 | Профилактика оборудования 8 | 3h | 2026-07-28 09:00 | 2026-07-28 12:00 | start no earlier than 2026-07-28 09:00 | Профилактика [1 Обсл] |

Changed:

| ID | Task | Start | Finish |
| --- | --- | --- | --- |
| 1 | Начало реализации проекта | 2026-04-06 → 2026-04-06 09:00 | 2026-04-06 → 2026-04-06 09:00 |
| 2 | **Программирование** | 2026-04-07 → 2026-04-07 09:00 | 2026-06-08 → 2026-06-09 16:00 (+1d) |
| 3 | Постановка задачи | 2026-04-07 → 2026-04-07 09:00 | 2026-04-13 → 2026-04-13 18:00 |
| 4 | Разработка интерфейса | 2026-04-14 → 2026-04-14 09:00 | 2026-05-06 → 2026-05-06 17:00 |
| 5 | Разработка модулей обработки данных | 2026-05-06 → 2026-05-06 17:00 | 2026-05-28 → 2026-05-29 12:00 (+1d) |
| 6 | Разработа базы данных | 2026-04-14 → 2026-04-14 09:00 | 2026-05-21 → 2026-05-22 12:00 (+1d) |
| 7 | Заполнение базы данных | 2026-05-21 → 2026-05-22 12:00 (+1d) | 2026-06-08 → 2026-06-09 16:00 (+1d) |
| 8 | Программирование завершено | 2026-06-08 → 2026-06-09 16:00 (+1d) | 2026-06-08 → 2026-06-09 16:00 (+1d) |
| 9 | **Тестирование и отладка** | 2026-06-01 → 2026-06-02 16:00 (+1d) | 2026-06-30 → 2026-07-02 15:00 (+2d) |
| 10 | Подготовка тестовых наборов данных | 2026-06-01 → 2026-06-02 16:00 (+1d) | 2026-06-08 → 2026-06-09 16:00 (+1d) |
| 11 | Тестирование и исправление ошибок | 2026-06-08 → 2026-06-09 16:00 (+1d) | 2026-06-30 → 2026-07-02 15:00 (+2d) |
| 12 | Отладка завершена | 2026-06-30 → 2026-07-02 15:00 (+2d) | 2026-06-30 → 2026-07-02 15:00 (+2d) |
| 13 | **Разработка документации** | 2026-06-23 → 2026-06-25 11:00 (+2d) | 2026-07-28 → 2026-07-31 12:00 (+3d) |
| 14 | Составление программной документации | 2026-06-23 → 2026-06-25 11:00 (+2d) | 2026-07-07 → 2026-07-09 15:00 (+2d) |
| 15 | Составление пользовательской документации | 2026-07-07 → 2026-07-09 15:00 (+2d) | 2026-07-28 → 2026-07-31 12:00 (+3d) |
| 16 | Конец проекта | 2026-07-28 → 2026-07-31 12:00 (+3d) | 2026-07-28 → 2026-07-31 12:00 (+3d) |

## Version 4 (saved 2026-03-25, file rk1_9.mpp)

Note of the change: Added rk1

Last finish 2026-07-31 → 2026-07-13 (-18d).

Removed: 24 Профилактика оборудования 7; 25 Профилактика оборудования 8

Changed:

| ID | Task | Start | Finish | Duration | Total float | Other |
| --- | --- | --- | --- | --- | --- | --- |
| 1 | Начало реализации проекта |  |  |  |  | baseline start none → 2026-04-06 09:00; baseline finish none → 2026-04-06 09:00 |
| 2 | **Программирование** |  | 2026-06-09 16:00 → 2026-05-20 17:18 (-20d) | 42d → 28.54d |  | baseline start none → 2026-04-07 09:00; baseline finish none → 2026-05-20 17:18 |
| 3 | Постановка задачи |  |  |  |  | baseline start none → 2026-04-07 09:00; baseline finish none → 2026-04-13 18:00 |
| 4 | Разработка интерфейса |  | 2026-05-06 17:00 → 2026-04-28 12:00 (-8d) | 15d → 10d | 7d → 4.5d | baseline start none → 2026-04-14 09:00; baseline finish none → 2026-04-28 12:00 |
| 5 | Разработка модулей обработки данных | 2026-05-06 17:00 → 2026-04-28 12:00 (-8d) | 2026-05-29 12:00 → 2026-05-14 09:18 (-15d) | 15d → 9.04d | 7d → 4.5d | resources Программист 2; Программист 3 → Ведущий программист; Программист 1; Программист 2; Программист 3; baseline start none → 2026-04-28 12:00; baseline finish none → 2026-05-14 09:18 |
| 6 | Разработа базы данных |  | 2026-05-22 12:00 → 2026-04-29 17:18 (-23d) | 25d → 11.54d |  | resources Аналитик; Программист 1 → Аналитик; Программист 2; Программист 3; baseline start none → 2026-04-14 09:00; baseline finish none → 2026-04-29 17:18 |
| 7 | Заполнение базы данных | 2026-05-22 12:00 → 2026-04-29 17:18 (-23d) | 2026-06-09 16:00 → 2026-05-20 17:18 (-20d) |  |  | baseline start none → 2026-04-29 17:18; baseline finish none → 2026-05-20 17:18 |
| 8 | Программирование завершено | 2026-06-09 16:00 → 2026-05-20 17:18 (-20d) | 2026-06-09 16:00 → 2026-05-20 17:18 (-20d) |  |  | baseline start none → 2026-05-20 17:18; baseline finish none → 2026-05-20 17:18 |
| 9 | **Тестирование и отладка** | 2026-06-02 16:00 → 2026-05-13 14:18 (-20d) | 2026-07-02 15:00 → 2026-06-01 15:12 (-31d) | 20d → 12.74d | 20d → 27.26d | baseline start none → 2026-05-13 14:18; baseline finish none → 2026-06-01 15:12 |
| 10 | Подготовка тестовых наборов данных | 2026-06-02 16:00 → 2026-05-13 14:18 (-20d) | 2026-06-09 16:00 → 2026-05-21 10:12 (-19d) | 5d → 5.24d | 20d → 27.26d | resources Программист 1; Программист 3 → Программист 1; Ведущий программист; baseline start none → 2026-05-13 14:18; baseline finish none → 2026-05-21 10:12 |
| 11 | Тестирование и исправление ошибок | 2026-06-09 16:00 → 2026-05-21 10:12 (-19d) | 2026-07-02 15:00 → 2026-06-01 15:12 (-31d) | 15d → 7.5d | 20d → 27.26d | resources Ведущий программист; Программист 2 → Ведущий программист; Программист 2; Программист 1; Программист 3; baseline start none → 2026-05-21 10:12; baseline finish none → 2026-06-01 15:12 |
| 12 | Отладка завершена | 2026-07-02 15:00 → 2026-06-01 15:12 (-31d) | 2026-07-02 15:00 → 2026-06-01 15:12 (-31d) |  | 20d → 27.26d | baseline start none → 2026-06-01 15:12; baseline finish none → 2026-06-01 15:12 |
| 13 | **Разработка документации** | 2026-06-25 11:00 → 2026-06-04 11:18 (-21d) | 2026-07-31 12:00 → 2026-07-13 10:18 (-18d) |  |  | baseline start none → 2026-06-04 11:18; baseline finish none → 2026-07-13 10:18 |
| 14 | Составление программной документации | 2026-06-25 11:00 → 2026-06-04 11:18 (-21d) | 2026-07-09 15:00 → 2026-06-19 16:18 (-20d) |  |  | baseline start none → 2026-06-04 11:18; baseline finish none → 2026-06-19 16:18 |
| 15 | Составление пользовательской документации | 2026-07-09 15:00 → 2026-06-19 16:18 (-20d) | 2026-07-31 12:00 → 2026-07-13 10:18 (-18d) |  |  | baseline start none → 2026-06-19 16:18; baseline finish none → 2026-07-13 10:18 |
| 16 | Конец проекта | 2026-07-31 12:00 → 2026-07-13 10:18 (-18d) | 2026-07-31 12:00 → 2026-07-13 10:18 (-18d) |  |  | baseline start none → 2026-07-13 10:18; baseline finish none → 2026-07-13 10:18 |
| 17 | **Профилактика оборудования** |  | 2026-07-28 12:00 → 2026-06-30 12:00 (-28d) | 64d → 44.75d |  | baseline start none → 2026-04-21 09:00; baseline finish none → 2026-06-30 12:00 |
| 18 | Профилактика оборудования 1 |  |  |  |  | baseline start none → 2026-04-21 09:00; baseline finish none → 2026-04-21 12:00 |
| 19 | Профилактика оборудования 2 |  |  |  |  | baseline start none → 2026-05-05 09:00; baseline finish none → 2026-05-05 12:00 |
| 20 | Профилактика оборудования 3 |  |  |  |  | baseline start none → 2026-05-19 09:00; baseline finish none → 2026-05-19 12:00 |
| 21 | Профилактика оборудования 4 |  |  |  |  | baseline start none → 2026-06-02 09:00; baseline finish none → 2026-06-02 12:00 |
| 22 | Профилактика оборудования 5 |  |  |  |  | baseline start none → 2026-06-16 09:00; baseline finish none → 2026-06-16 12:00 |
| 23 | Профилактика оборудования 6 |  |  |  |  | baseline start none → 2026-06-30 09:00; baseline finish none → 2026-06-30 12:00 |

## Version 5 (data date 2026-06-02, saved 2026-03-25, file rk1_10.mpp)

Note of the change: Added rk1

Last finish 2026-07-13 → 2026-07-14 (+1d). Complete tasks 0 → 13.

Added:

| ID | Task | Duration | Start | Finish | Constraint | Resources |
| --- | --- | --- | --- | --- | --- | --- |
| 8 | Разработка интеграции | 5d | 2026-04-28 A | 2026-05-06 A | start no earlier than 2026-04-22 | Программист 1 |

Changed:

| ID | Task | Start | Finish | Duration | Complete | Total float | Predecessors | Other |
| --- | --- | --- | --- | --- | --- | --- | --- | --- |
| 1 | Начало реализации проекта | 2026-04-06 09:00 → 2026-04-06 A | 2026-04-06 09:00 → 2026-04-06 A |  | 0% → 100% | 0d → none |  | baseline start 2026-04-06 09:00 → 2026-04-06; baseline finish 2026-04-06 09:00 → 2026-04-06 |
| 2 | **Программирование** | 2026-04-07 09:00 → 2026-04-07 A | 2026-05-20 17:18 → 2026-05-21 A (+1d) | 28.54d → 29.5d | 0% → 100% | 0d → none |  | baseline start 2026-04-07 09:00 → 2026-04-07; baseline finish 2026-05-20 17:18 → 2026-05-20 |
| 3 | Постановка задачи | 2026-04-07 09:00 → 2026-04-07 A | 2026-04-13 18:00 → 2026-04-13 A |  | 0% → 100% | 0d → none |  | baseline start 2026-04-07 09:00 → 2026-04-07; baseline finish 2026-04-13 18:00 → 2026-04-13 |
| 4 | Разработка интерфейса | 2026-04-14 09:00 → 2026-04-14 A | 2026-04-28 12:00 → 2026-04-28 A |  | 0% → 100% | 4.5d → none |  | baseline start 2026-04-14 09:00 → 2026-04-14; baseline finish 2026-04-28 12:00 → 2026-04-28 |
| 5 | Разработка модулей обработки данных | 2026-04-28 12:00 → 2026-04-28 A | 2026-05-14 09:18 → 2026-05-21 A (+7d) | 9.04d → 14.5d | 0% → 100% | 4.5d → none |  | resources Ведущий программист; Программист 1; Программист 2; Программист 3 → Ведущий программист; Программист 2; Программист 3; baseline start 2026-04-28 12:00 → 2026-04-28; baseline finish 2026-05-14 09:18 → 2026-05-14 |
| 6 | Разработа базы данных | 2026-04-14 09:00 → 2026-04-14 A | 2026-04-29 17:18 → 2026-04-29 A |  | 0% → 100% | 0d → none |  | baseline start 2026-04-14 09:00 → 2026-04-14; baseline finish 2026-04-29 17:18 → 2026-04-29 |
| 7 | Заполнение базы данных | 2026-04-29 17:18 → 2026-04-29 A | 2026-05-20 17:18 → 2026-05-20 A |  | 0% → 100% | 0d → none |  | baseline start 2026-04-29 17:18 → 2026-04-29; baseline finish 2026-05-20 17:18 → 2026-05-20 |
| 9 | Программирование завершено | 2026-05-20 17:18 → 2026-05-21 A (+1d) | 2026-05-20 17:18 → 2026-05-21 A (+1d) |  | 0% → 100% | 0d → none | 5, 7 → 5, 7, 8 | baseline start 2026-05-20 17:18 → 2026-05-20; baseline finish 2026-05-20 17:18 → 2026-05-20 |
| 10 | **Тестирование и отладка** | 2026-05-13 14:18 → 2026-05-14 A (+1d) | 2026-06-01 15:12 → 2026-06-11 (+10d) | 12.74d → 19.61d | 0% → 65% | 27.26d → 20.39d |  | baseline start 2026-05-13 14:18 → 2026-05-13; baseline finish 2026-06-01 15:12 → 2026-06-01 |
| 11 | Подготовка тестовых наборов данных | 2026-05-13 14:18 → 2026-05-14 A (+1d) | 2026-05-21 10:12 → 2026-05-29 A (+8d) | 5.24d → 10d | 0% → 100% | 27.26d → none |  | baseline start 2026-05-13 14:18 → 2026-05-13; baseline finish 2026-05-21 10:12 → 2026-05-21 |
| 12 | Тестирование и исправление ошибок | 2026-05-21 10:12 → 2026-05-29 A (+8d) | 2026-06-01 15:12 → 2026-06-11 (+10d) | 7.5d → 9.38d | 0% → 27% | 27.26d → 20.39d |  | baseline start 2026-05-21 10:12 → 2026-05-21; baseline finish 2026-06-01 15:12 → 2026-06-01 |
| 13 | Отладка завершена | 2026-06-01 15:12 → 2026-06-11 (+10d) | 2026-06-01 15:12 → 2026-06-11 (+10d) |  |  | 27.26d → 20.39d |  | baseline start 2026-06-01 15:12 → 2026-06-01; baseline finish 2026-06-01 15:12 → 2026-06-01 |
| 14 | **Разработка документации** | 2026-06-04 11:18 → 2026-06-05 (+1d) | 2026-07-13 10:18 → 2026-07-14 (+1d) |  |  |  |  | baseline start 2026-06-04 11:18 → 2026-06-04; baseline finish 2026-07-13 10:18 → 2026-07-13 |
| 15 | Составление программной документации | 2026-06-04 11:18 → 2026-06-05 (+1d) | 2026-06-19 16:18 → 2026-06-22 (+3d) |  |  |  |  | baseline start 2026-06-04 11:18 → 2026-06-04; baseline finish 2026-06-19 16:18 → 2026-06-19 |
| 16 | Составление пользовательской документации | 2026-06-19 16:18 → 2026-06-22 (+3d) | 2026-07-13 10:18 → 2026-07-14 (+1d) |  |  |  |  | baseline start 2026-06-19 16:18 → 2026-06-19; baseline finish 2026-07-13 10:18 → 2026-07-13 |
| 17 | Конец проекта | 2026-07-13 10:18 → 2026-07-14 (+1d) | 2026-07-13 10:18 → 2026-07-14 (+1d) |  |  |  |  | baseline start 2026-07-13 10:18 → 2026-07-13; baseline finish 2026-07-13 10:18 → 2026-07-13 |
| 18 | **Профилактика оборудования** | 2026-04-21 09:00 → 2026-04-21 A | 2026-06-30 12:00 → 2026-06-30 |  | 0% → 67% |  |  | baseline start 2026-04-21 09:00 → 2026-04-21; baseline finish 2026-06-30 12:00 → 2026-06-30 |
| 19 | Профилактика оборудования 1 | 2026-04-21 09:00 → 2026-04-21 A | 2026-04-21 12:00 → 2026-04-21 A |  | 0% → 100% |  |  | constraint start no earlier than 2026-04-21 09:00 → start no earlier than 2026-04-21; baseline start 2026-04-21 09:00 → 2026-04-21; baseline finish 2026-04-21 12:00 → 2026-04-21 |
| 20 | Профилактика оборудования 2 | 2026-05-05 09:00 → 2026-05-05 A | 2026-05-05 12:00 → 2026-05-05 A |  | 0% → 100% |  |  | constraint start no earlier than 2026-05-05 09:00 → start no earlier than 2026-05-05; baseline start 2026-05-05 09:00 → 2026-05-05; baseline finish 2026-05-05 12:00 → 2026-05-05 |
| 21 | Профилактика оборудования 3 | 2026-05-19 09:00 → 2026-05-19 A | 2026-05-19 12:00 → 2026-05-19 A |  | 0% → 100% |  |  | constraint start no earlier than 2026-05-19 09:00 → start no earlier than 2026-05-19; baseline start 2026-05-19 09:00 → 2026-05-19; baseline finish 2026-05-19 12:00 → 2026-05-19 |
| 22 | Профилактика оборудования 4 | 2026-06-02 09:00 → 2026-06-02 A | 2026-06-02 12:00 → 2026-06-02 A |  | 0% → 100% |  |  | constraint start no earlier than 2026-06-02 09:00 → start no earlier than 2026-06-02; baseline start 2026-06-02 09:00 → 2026-06-02; baseline finish 2026-06-02 12:00 → 2026-06-02 |
| 23 | Профилактика оборудования 5 | 2026-06-16 09:00 → 2026-06-16 | 2026-06-16 12:00 → 2026-06-16 |  |  |  |  | constraint start no earlier than 2026-06-16 09:00 → start no earlier than 2026-06-16; baseline start 2026-06-16 09:00 → 2026-06-16; baseline finish 2026-06-16 12:00 → 2026-06-16 |
| 24 | Профилактика оборудования 6 | 2026-06-30 09:00 → 2026-06-30 | 2026-06-30 12:00 → 2026-06-30 |  |  |  |  | constraint start no earlier than 2026-06-30 09:00 → start no earlier than 2026-06-30; baseline start 2026-06-30 09:00 → 2026-06-30; baseline finish 2026-06-30 12:00 → 2026-06-30 |
